# SGI

Schedule from MS Project, 2012-09-24 to 2013-02-08.

## Calendars

- Estándar: Mon-Fri 09:00-13:00, 15:00-19:00; Sat-Sun off.

## Resources

| Resource |
| --- |
| CPSAA |
| AF |
| AP1 |
| AP2 |
| DW |
| ABAPER |
| CPS |
| APMOVIL |

## Schedule

| ID | WBS | Task | Type | Duration | Start | Finish | Predecessors | Total slack | Constraint | Resources | Work |
| --- | --- | --- | --- | --- | --- | --- | --- | --- | --- | --- | --- |
| 1 | 1 | **Bitacora de Operaciones** |  | 100d | 2012-09-24 | 2013-02-08 |  | 0d |  |  | 2960h |
| 2 | 1.1 | **Levantamiento de información** |  | 28d | 2012-09-24 | 2012-10-31 |  | 0d |  |  | 768h |
| 3 | 1.1.1 | **Reunirse con usuarios para levantamiento de información** |  | 10d | 2012-09-24 | 2012-10-05 |  | 28d |  | CPSAA; AF; AP1 | 240h |
| 4 | 1.1.1.1 | 1 |  | 1d | 2012-09-24 | 2012-09-24 |  | 34d | start no earlier than 2012-09-24 |  |  |
| 5 | 1.1.1.2 | 2 |  | 1d | 2012-09-25 | 2012-09-25 |  | 33d | start no earlier than 2012-09-25 |  |  |
| 6 | 1.1.1.3 | 3 |  | 1d | 2012-09-26 | 2012-09-26 |  | 32d | start no earlier than 2012-09-26 |  |  |
| 7 | 1.1.1.4 | 4 |  | 1d | 2012-09-27 | 2012-09-27 |  | 31d | start no earlier than 2012-09-27 |  |  |
| 8 | 1.1.1.5 | 5 |  | 1d | 2012-09-28 | 2012-09-28 |  | 30d | start no earlier than 2012-09-28 |  |  |
| 9 | 1.1.1.6 | 6 |  | 1d | 2012-10-01 | 2012-10-01 |  | 29d | start no earlier than 2012-09-29 |  |  |
| 10 | 1.1.1.7 | 9 |  | 1d | 2012-10-02 | 2012-10-02 |  | 28d | start no earlier than 2012-10-02 |  |  |
| 11 | 1.1.1.8 | 10 |  | 1d | 2012-10-03 | 2012-10-03 |  | 27d | start no earlier than 2012-10-03 |  |  |
| 12 | 1.1.1.9 | 11 |  | 1d | 2012-10-04 | 2012-10-04 |  | 26d | start no earlier than 2012-10-04 |  |  |
| 13 | 1.1.1.10 | 12 |  | 1d | 2012-10-05 | 2012-10-05 |  | 25d | start no earlier than 2012-10-05 |  |  |
| 14 | 1.1.2 | Realizar formularios de aplicación |  | 10d | 2012-09-24 | 2012-10-05 |  | 28d | start no earlier than 2012-09-24 | AF | 80h |
| 15 | 1.1.3 | Elaborar BBP |  | 14d | 2012-09-24 | 2012-10-11 |  | 0d | start no earlier than 2012-09-24 | AF | 112h |
| 16 | 1.1.4 | **Definición de arquitectura de aplicación** |  | 14d | 2012-10-12 | 2012-10-31 | 15 | 0d |  |  | 336h |
| 17 | 1.1.4.1 | Coordinar definición de arquitectura de aplicación |  | 1d | 2012-10-12 | 2012-10-12 |  | 0d |  | CPSAA; AF; AP1 | 24h |
| 18 | 1.1.4.2 | Definir modelo lógico |  | 3d | 2012-10-15 | 2012-10-17 | 17 | 0d |  | CPSAA; AF; AP1 | 72h |
| 19 | 1.1.4.3 | Definir RFCs |  | 5d | 2012-10-18 | 2012-10-24 | 18 | 0d |  | CPSAA; AF; AP1 | 120h |
| 20 | 1.1.4.4 | Definir integración con SGCP |  | 5d | 2012-10-25 | 2012-10-31 | 19 | 0d |  | CPSAA; AF; AP1 | 120h |
| 21 | 1.2 | **Aprobación de BBP, formularios de aplicación y modelo lógico** |  | 10d | 2012-11-01 | 2012-11-14 | 16 | 0d |  |  | 120h |
| 22 | 1.2.1 | Revisar BBP con formularios de aplicación |  | 2d | 2012-11-01 | 2012-11-02 |  | 0d | start no earlier than 2012-08-24 | CPSAA | 16h |
| 23 | 1.2.2 | Revisar modelo lógico |  | 2d | 2012-11-05 | 2012-11-06 | 22 | 0d |  | CPSAA | 16h |
| 24 | 1.2.3 | Realizar ajustes al BBP |  | 5d | 2012-11-07 | 2012-11-13 | 23 | 0d |  | AF; AP1 | 80h |
| 25 | 1.2.4 | Aprobación final | milestone | 1d | 2012-11-14 | 2012-11-14 | 24 | 0d |  | CPSAA | 8h |

Notes:
- 14: -Uso de herramienta para dibujar los formularios. Esto no implica la parte de diseño gráfico.
- 15: -Despues de los 10 días de levantamiento de información en conjunto con la elaboración del BBP, se consideran días adicionales (trabajados en Lima) para realizar ajustes y completar definiciones del modulo de seguridad (definición de roles)
- 16: -Usar librerías estandares como jquery / -Framework:spring mvc, hibernate, etc. Se requiere reunión con Miguel Ortiz para ver preferencias.
- 18: -Mejorar modelo lógico de PM (SAP)
- 19: -Incluye definición de parámetros enviados desde la nueva aplicación a SAP, y datos insertados en SAP.
- 20: -Definir en qué tablas del SGCP se registrará la data de cambio de equipo y producto desde la nueva aplicación. Y que accesos se otorgarán. / -Definir desde que tablas del SGCP se obtendrá la información para la generación de reportes.

| ID | WBS | Task | Type | Duration | Start | Finish | Predecessors | Total slack | Free slack | Resources | Work |
| --- | --- | --- | --- | --- | --- | --- | --- | --- | --- | --- | --- |
| 26 | 1.3 | **Desarrollo** |  | 32d | 2012-11-15 | 2012-12-28 | 2, 21 | 0d |  |  | 872h |
| 27 | 1.3.1 | **Diseño de aplicación Web** |  | 14d | 2012-11-15 | 2012-12-04 |  | 43d | 13d |  | 112h |
| 28 | 1.3.1.1 | Proponer línea gráfica de la aplicación |  | 3d | 2012-11-15 | 2012-11-19 |  | 38d | 0d | DW | 24h |
| 29 | 1.3.1.2 | Aprobar Línea Gráfica | milestone | 2d | 2012-11-20 | 2012-11-21 | 28 | 38d | 0d | CPSAA | 16h |
| 30 | 1.3.1.3 | Realizar prototipos con diseño gráfico |  | 6d | 2012-11-22 | 2012-11-29 | 29 | 38d | 0d | DW | 48h |
| 31 | 1.3.1.4 | Aprobar prototipos | milestone | 3d | 2012-11-30 | 2012-12-04 | 30 | 38d |  | CPSAA | 24h |
| 32 | 1.3.2 | **Aplicación Web** |  | 27d | 2012-11-15 | 2012-12-21 |  | 30d | 0d |  | 600h |
| 33 | 1.3.2.1 | **Implementar arquitectura** |  | 5d | 2012-11-15 | 2012-11-21 |  | 30d | 0d |  | 72h |
| 34 | 1.3.2.1.1 | Implementar arquitectura |  | 2d | 2012-11-15 | 2012-11-16 |  | 25d | 0d | AP2 | 16h |
| 35 | 1.3.2.1.2 | Implementar modelo lógico |  | 4d | 2012-11-15 | 2012-11-20 |  | 31d |  | AP1 | 32h |
| 36 | 1.3.2.1.3 | Implementar ambiente para pruebas unitarias |  | 3d | 2012-11-19 | 2012-11-21 | 34 | 25d |  | AP2 | 24h |
| 37 | 1.3.2.2 | Implementar modulo de seguridad |  | 5d | 2012-11-22 | 2012-11-28 | 33 | 25d | 0d | AP2 | 40h |
| 38 | 1.3.2.3 | **Implementar RFCs** |  | 5d | 2012-11-15 | 2012-11-21 |  | 52d |  | ABAPER | 40h |
| 39 | 1.3.2.3.1 | Implementar RFC para creación de avisos |  | 5d | 2012-11-15 | 2012-11-21 |  | 47d |  |  |  |
| 40 | 1.3.2.4 | **Modulo ocurrencias** |  | 5d | 2012-11-22 | 2012-11-28 | 33 | 47d |  | AP1 | 40h |
| 41 | 1.3.2.4.1 | Implementar modulo |  | 5d | 2012-11-22 | 2012-11-28 |  | 42d |  |  |  |
| 42 | 1.3.2.4.2 | Realizar pruebas unitarias |  | 5d | 2012-11-22 | 2012-11-28 |  | 47d |  |  |  |
| 43 | 1.3.2.5 | **Modulo Alertas** |  | 7d | 2012-11-29 | 2012-12-07 | 37 | 30d | 0d | AP2 | 56h |
| 44 | 1.3.2.5.1 | Implementar modulo |  | 4d | 2012-11-29 | 2012-12-04 |  | 25d | 0d |  |  |
| 45 | 1.3.2.5.2 | Realizar pruebas unitarias |  | 4d | 2012-11-29 | 2012-12-04 |  | 30d | 0d |  |  |
| 46 | 1.3.2.5.3 | Implementar webservice |  | 3d | 2012-12-05 | 2012-12-07 | 44, 45 | 25d |  |  |  |
| 47 | 1.3.2.6 | **Funcionalidad de paradas** |  | 6d | 2012-11-15 | 2012-11-22 |  | 32d | 0d | AP1 | 48h |
| 48 | 1.3.2.6.1 | Implementar funcionalidad |  | 6d | 2012-11-15 | 2012-11-22 |  | 27d |  |  |  |
| 49 | 1.3.2.6.2 | Realizar pruebas unitarias |  | 6d | 2012-11-15 | 2012-11-22 |  | 32d |  |  |  |

Notes:
- 35: -Implica realizar una precarga de la data de PM (SAP)
- 37: -Funcionalidad para gestión de roles y creación de tablas de usuario (correo electronico, imei, sms)
- 43: -Implementar funcionalidad que permite crear tipos de alertas y que estas sean asignadas a roles de usuarios
- 46: -Para facilitar programación al modulo de movilidad. / -Utilizar REST. / -Crear parada, notificar alerta, login.
- 47: -Generación de alertas cuando la ocurrencia es del tipo parada. / -De acuerdo al tipo de falla replicar el aviso en SAP. Implementar llamada a RFCs. / *Proponer validación de generación de avisos, en caso el usuario se equivoque.

| ID | WBS | Task | Type | Duration | Start | Finish | Predecessors | Total slack | Free slack | Resources | Work |
| --- | --- | --- | --- | --- | --- | --- | --- | --- | --- | --- | --- |
| 50 | 1.3.2.7 | **Funcionalidad de cambio de equipo** |  | 5d | 2012-12-10 | 2012-12-14 | 43 | 30d | 0d | AP2 | 40h |
| 51 | 1.3.2.7.1 | Implementar modulo |  | 5d | 2012-12-10 | 2012-12-14 |  | 25d |  |  |  |
| 52 | 1.3.2.7.2 | Realizar pruebas unitarias |  | 5d | 2012-12-10 | 2012-12-14 |  | 30d |  |  |  |
| 53 | 1.3.2.8 | **Funcionalidad de cambio de producto** |  | 5d | 2012-12-17 | 2012-12-21 | 50 | 30d |  | AP2 | 40h |
| 54 | 1.3.2.8.1 | Implementar modulo |  | 5d | 2012-12-17 | 2012-12-21 |  | 25d |  |  |  |
| 55 | 1.3.2.8.2 | Realizar pruebas unitarias |  | 5d | 2012-12-17 | 2012-12-21 |  | 30d |  |  |  |
| 56 | 1.3.2.9 | **Modulo Reportes** |  | 19d | 2012-11-23 | 2012-12-19 | 47 | 32d |  | AP1 | 152h |
| 57 | 1.3.2.9.1 | Implementar modulo |  | 15d | 2012-11-23 | 2012-12-13 |  | 27d | 0d |  |  |
| 58 | 1.3.2.9.2 | Realizar pruebas unitarias |  | 4d | 2012-12-14 | 2012-12-19 | 57 | 27d |  |  |  |
| 59 | 1.3.2.10 | **Modulo Alertas - Aplicación movil nativa** |  | 9d | 2012-12-10 | 2012-12-20 | 43 | 31d |  |  | 72h |
| 60 | 1.3.2.10.1 | Desarrollar Servicio en Background escuchando las alertas del usuario |  | 4d | 2012-12-10 | 2012-12-13 |  | 31d | 0d | APMOVIL | 32h |
| 61 | 1.3.2.10.2 | Mostrar Alertas en el área de notificación de Android y enviar respuesta al server al interactuar el usuario |  | 3d | 2012-12-14 | 2012-12-18 | 60 | 31d | 0d | APMOVIL | 24h |
| 62 | 1.3.2.10.3 | Realizar documentación |  | 2d | 2012-12-19 | 2012-12-20 | 61 | 31d |  | APMOVIL | 16h |
| 63 | 1.3.3 | **Integración** |  | 5d | 2012-12-24 | 2012-12-28 | 32, 27 | 30d |  |  |  |
| 64 | 1.3.3.1 | Integrar modulos |  | 5d | 2012-12-24 | 2012-12-28 |  | 30d |  |  |  |
| 65 | 1.3.4 | **Documentación** |  | 20d | 2012-11-15 | 2012-12-12 |  | 0d |  | AF | 160h |
| 66 | 1.3.4.1 | Realizar plan de pruebas |  | 1d | 2012-11-15 | 2012-11-15 |  | 0d |  |  |  |
| 67 | 1.3.4.2 | Realizar casos de prueba |  | 8d | 2012-11-16 | 2012-11-27 | 66 | 0d |  |  |  |
| 68 | 1.3.4.3 | Realizar manual de usuario |  | 8d | 2012-11-28 | 2012-12-07 | 67 | 0d |  |  |  |
| 69 | 1.3.4.4 | Realizar diccionario de datos |  | 3d | 2012-12-10 | 2012-12-12 | 68 | 0d |  |  |  |
| 70 | 1.4 | **Pruebas** |  | 28d | 2012-12-13 | 2013-01-21 | 69 | 0d |  |  | 920h |
| 71 | 1.4.1 | Pruebas Unitarias |  | 11d | 2012-12-13 | 2012-12-27 |  | 0d |  | AF; AP1; AP2 | 264h |
| 72 | 1.4.2 | Proveer servidor de pruebas con webservice rest para aplicación movil | milestone | 7d | 2012-12-13 | 2012-12-21 |  | 4d |  | CPSAA | 56h |
| 73 | 1.4.3 | Proveer servidor de pruebas para aplicación web | milestone | 7d | 2012-12-13 | 2012-12-21 |  | 4d |  | CPSAA | 56h |
| 74 | 1.4.4 | Pruebas Integrales |  | 17d | 2012-12-28 | 2013-01-21 | 73, 72, 71 | 0d |  | CPSAA; AF; AP1; AP2 | 544h |

Notes:
- 50: -Se integrará con el SGCP, directamente a la BD.
- 53: -Se integrará con el SGCP, directamente a la BD.
- 56: -Implementar 5 tipos de reporte: pareto, tendencia, pie, barras, texto resumen. / -CPSAA tiene preferencias por alguna librería de reportes?. / -Se requiere exportación a xls, pdf? / -Implementar modulo con SGCP. Conexión directa o por una interfaz?
- 71: -Incluye las pruebas unitarias de la aplicación movil nativa (1día)
- 74: -Incluye detección de observaciones y corrección por parte de los analistas programadores. / -Incluye pruebas integrales de aplicación movil nativa (3 días entre correcciones)

| ID | WBS | Task | Duration | Start | Finish | Predecessors | Total slack | Constraint | Resources | Work |
| --- | --- | --- | --- | --- | --- | --- | --- | --- | --- | --- |
| 75 | 1.5 | **Pase a producción** | 1d | 2013-01-22 | 2013-01-22 | 70 | 0d |  | CPSAA | 8h |
| 76 | 1.5.1 | Realizar pase a producción | 1d | 2013-01-22 | 2013-01-22 |  | 0d |  |  |  |
| 77 | 1.6 | **Post-Producción** | 8d | 2013-01-23 | 2013-02-01 | 75 | 0d |  | AP2; AP1 | 128h |
| 78 | 1.6.1 | Realizar actividades de soporte | 8d | 2013-01-23 | 2013-02-01 |  | 0d |  |  |  |
| 79 | 1.7 | **Capacitación** | 8d | 2013-01-23 | 2013-02-01 | 75 | 5d |  | AF | 64h |
| 80 | 1.7.1 | Realizar capacitación a usuarios | 8d | 2013-01-23 | 2013-02-01 |  | 5d |  |  |  |
| 81 | 1.8 | **Manual Técnico** | 5d | 2013-02-04 | 2013-02-08 | 77 | 0d |  | AP1; AP2 | 80h |
| 82 | 1.8.1 | Realizar documento | 5d | 2013-02-04 | 2013-02-08 |  | 0d | start no earlier than 2012-10-12 |  |  |

Notes:
- 77: -Incluye post producción de aplicación movil nativa (1 día)
- 79: -Incluye capacitación en uso de aplicación movil nativa (1 día)
